How a schedule from MS Project changed from version to version. A marks actual dates.

## Version 1 (saved 2016-10-24, file Cronograma.mpp)

Note of the change: Adição da Documentação - Relatório de Alterações - Status Report

| ID | WBS | Task | Duration | Start | Finish | Predecessors | Complete | Total float |
| --- | --- | --- | --- | --- | --- | --- | --- | --- |
| 1 | 1 | **CrowdFunding Project** | 62.12d | 2016-08-29 A | 2016-11-22 |  | 45% |  |
| 2 | 1.1 | **Prospecção** | 10.88d | 2016-08-29 A | 2016-09-12 A |  | 100% |  |
| 3 | 1.1.1 | **PTEC** | 6.75d | 2016-08-29 A | 2016-09-06 A |  | 100% |  |
| 4 |  | Estudar Domínio de Aplicação | 0.5d | 2016-08-29 A | 2016-08-29 A |  | 100% |  |
| 5 |  | Encontrar-se com Fornecedor de Requisitos | 1d | 2016-08-29 A | 2016-08-30 A | 4 | 100% |  |
| 6 |  | Redigir PTEC | 4.12d | 2016-08-30 A | 2016-09-05 A | 5 | 100% |  |
| 7 |  | Revisar PTEC | 1d | 2016-09-05 A | 2016-09-06 A | 6 | 100% |  |
| 8 |  | Aprovar PTEC | 0.12d | 2016-09-06 A | 2016-09-06 A | 7 | 100% |  |
| 9 | 1.1.2 | **EPT - Estimativa Preliminar de Tamanho** | 3.12d | 2016-09-06 A | 2016-09-09 A |  | 100% |  |
| 10 |  | Estimar Tamanho do Projeto | 2.12d | 2016-09-06 A | 2016-09-08 A | 8 | 100% |  |
| 11 |  | Revisar Estimativa de Tamanho do Projeto | 1d | 2016-09-08 A | 2016-09-09 A | 10 | 100% |  |
| 12 | 1.1.3 | **CRP e ORP - Cronograma e Orçamentos Preliminar** | 4.12d | 2016-09-06 A | 2016-09-12 A |  | 100% |  |
| 13 |  | Elaborar Cronograma e Orçamento Preliminar | 3.12d | 2016-09-06 A | 2016-09-09 A | 8 | 100% |  |
| 14 |  | Revisar Cronograma e Orçamento Preliminar | 1d | 2016-09-09 A | 2016-09-12 A | 13 | 100% |  |
| 15 | 1.2 | **Planejamento** | 3d? | 2016-09-06 A | 2016-09-09 A |  | 100% |  |
| 16 | 1.2.1 | **Plano de Projeto** | 2d? | 2016-09-06 A | 2016-09-08 A |  | 100% |  |
| 17 |  | Elaborar Plano de Projeto | 1d? | 2016-09-06 A | 2016-09-07 A | 8 | 100% |  |
| 18 |  | Revisar Plano de Projeto | 1d? | 2016-09-07 A | 2016-09-08 A | 17 | 100% |  |
| 19 | 1.2.2 | **EAP** | 2d? | 2016-09-06 A | 2016-09-08 A |  | 100% |  |
| 20 |  | Elaborar EAP | 1d? | 2016-09-06 A | 2016-09-07 A | 8 | 100% |  |
| 21 |  | Revisar EAP | 1d? | 2016-09-07 A | 2016-09-08 A | 20 | 100% |  |
| 22 | 1.2.3 | **ETD - Estimativa de Tamanho Definitiva** | 2d? | 2016-09-06 A | 2016-09-08 A |  | 100% |  |
| 23 |  | Elaborar ETD | 1d? | 2016-09-06 A | 2016-09-07 A | 8 | 100% |  |
| 24 |  | Revisar ETD | 1d? | 2016-09-07 A | 2016-09-08 A | 23 | 100% |  |
| 25 | 1.2.4 | **Revisão e Aprovação - Planejamento** | 1d? | 2016-09-08 A | 2016-09-09 A |  | 100% |  |
| 26 |  | Aprovar Plano de Projeto | 1d? | 2016-09-08 A | 2016-09-09 A | 18 | 100% |  |
| 27 |  | Aprovar EAP | 1d? | 2016-09-08 A | 2016-09-09 A | 21 | 100% |  |
| 28 |  | Aprovar ETD | 1d? | 2016-09-08 A | 2016-09-09 A | 24 | 100% |  |
| 29 | 1.3 | **Análise** | 6d? | 2016-09-09 A | 2016-09-19 A |  | 100% |  |
| 30 | 1.3.1 | **Documento de Requisitos** | 4d? | 2016-09-09 A | 2016-09-15 A |  | 100% |  |
| 31 |  | Reunir-se com cliente | 1d? | 2016-09-09 A | 2016-09-12 A | 25 | 100% |  |
| 32 |  | Elaborar DRE | 1d? | 2016-09-12 A | 2016-09-13 A | 31 | 100% |  |
| 33 |  | Revisar DRE | 1d? | 2016-09-13 A | 2016-09-14 A | 32 | 100% |  |
| 34 |  | Submeter DRE para aprovação do cliente | 1d? | 2016-09-14 A | 2016-09-15 A | 33 | 100% |  |
| 35 | 1.3.2 | **MRB - Matriz de Rastreabilidade** | 2d? | 2016-09-15 A | 2016-09-19 A |  | 100% |  |
| 36 |  | Elaborar Matriz de Rastreabilidade | 1d? | 2016-09-15 A | 2016-09-16 A | 34 | 100% |  |
| 37 |  | Revisar Matriz de Rastreabilidade | 1d? | 2016-09-16 A | 2016-09-19 A | 36 | 100% |  |
| 38 | 1.4 | **Modelagem UML** | 3d? | 2016-09-19 A | 2016-09-22 A |  | 100% |  |
| 39 | 1.4.1 | **Diagrama de Classes** | 3d? | 2016-09-19 A | 2016-09-22 A |  | 100% |  |
| 40 |  | Elaborar Diagrama de Classes | 1d? | 2016-09-19 A | 2016-09-20 A | 29 | 100% |  |
| 41 |  | Revisar Diagrama de Classes | 1d? | 2016-09-20 A | 2016-09-21 A | 40 | 100% |  |
| 42 |  | Atualizar MRB | 1d? | 2016-09-21 A | 2016-09-22 A | 41 | 100% |  |
| 43 | 1.4.2 | **MER - Modelo Entidade Relacionamento** | 2d? | 2016-09-19 A | 2016-09-21 A |  | 100% |  |
| 44 |  | Elaborar MER | 1d? | 2016-09-19 A | 2016-09-20 A | 29 | 100% |  |
| 45 |  | Revisar MER | 1d? | 2016-09-20 A | 2016-09-21 A | 44 | 100% |  |
| 46 | 1.5 | **Implementação/Teste** | 39d? | 2016-09-22 A | 2016-11-16 |  | 23% | 1.25d |
| 47 | 1.5.1 | **Release 01** | 9d? | 2016-09-22 A | 2016-10-05 A |  | 100% |  |
| 48 | 1.5.1.1 | **Implementação** | 8d? | 2016-09-22 A | 2016-10-04 A |  | 100% |  |
| 49 |  | [RFS01] Adicionar Usuário | 1d | 2016-09-22 A | 2016-09-23 A | 38 | 100% |  |
| 50 |  | [RFS02] Editar Usuário | 1d | 2016-09-23 A | 2016-09-26 A | 49 | 100% |  |
| 51 |  | [RFS03] Consultar Usuário | 1d | 2016-09-26 A | 2016-09-27 A | 50 | 100% |  |
| 52 |  | [RFS04] Excluir Usuário | 1d | 2016-09-27 A | 2016-09-28 A | 51 | 100% |  |
| 53 |  | [RFS05] Cadastrar Projeto Candidato | 1d? | 2016-09-28 A | 2016-09-29 A | 52 | 100% |  |
| 54 |  | [RFS06] Listar Projetos Candidatos | 1d? | 2016-09-29 A | 2016-09-30 A | 53 | 100% |  |
| 55 |  | [RFS07] Alterar Projetos Candidatos | 1d? | 2016-09-30 A | 2016-10-03 A | 54 | 100% |  |
| 56 |  | [RFS08] Remover Projetos Candidatos | 1d? | 2016-10-03 A | 2016-10-04 A | 55 | 100% |  |
| 57 | 1.5.1.2 | **Teste - Selenium** | 1d? | 2016-10-04 A | 2016-10-05 A |  | 100% |  |
| 58 |  | Testar [RFS01] | 1d? | 2016-10-04 A | 2016-10-05 A | 48 | 100% |  |
| 59 |  | Testar [RFS02] | 1d | 2016-10-04 A | 2016-10-05 A | 48 | 100% |  |
| 60 |  | Testar [RFS03] | 1d | 2016-10-04 A | 2016-10-05 A | 48 | 100% |  |
| 61 |  | Testar [RFS04] | 1d? | 2016-10-04 A | 2016-10-05 A | 48 | 100% |  |
| 62 |  | Testar [RFS05] | 1d? | 2016-10-04 A | 2016-10-05 A | 48 | 100% |  |
| 63 |  | Testar [RFS06] | 1d? | 2016-10-04 A | 2016-10-05 A | 48 | 100% |  |
| 64 |  | Testar [RFS07] | 1d? | 2016-10-04 A | 2016-10-05 A | 48 | 100% |  |
| 65 |  | Testar [RFS08] | 1d? | 2016-10-04 A | 2016-10-05 A | 48 | 100% |  |
| 66 | 1.5.2 | **Release 02** | 10d? | 2016-10-05 | 2016-10-19 |  |  | 1.25d |
| 67 | 1.5.2.1 | **Implementação** | 9d? | 2016-10-05 | 2016-10-18 |  |  | 1.25d |
| 68 |  | [RFS09] Cadastrar Critério de Avaliação | 1d? | 2016-10-05 | 2016-10-06 | 57 |  | 1.25d |
| 69 |  | [RFS10] Listar Critério de Avaliação | 1d? | 2016-10-06 | 2016-10-07 | 68 |  | 1.25d |
| 70 |  | [RFS11] Alterar Critério de Avaliação | 1d? | 2016-10-07 | 2016-10-10 | 69 |  | 1.25d |

| ID | WBS | Task | Duration | Start | Finish | Predecessors | Total float |
| --- | --- | --- | --- | --- | --- | --- | --- |
| 71 |  | [RFS12] Desativar Critério de Avaliação | 1d? | 2016-10-10 | 2016-10-11 | 70 | 1.25d |
| 72 |  | [RFS13] Avaliar Projeto Candidato | 1d? | 2016-10-11 | 2016-10-12 | 71 | 1.25d |
| 73 |  | [RFS14] Consultar Avaliação do Projeto Candidato | 1d? | 2016-10-12 | 2016-10-13 | 72 | 1.25d |
| 74 |  | [RFS15] Alterar Avaliação do Projeto Candidato | 1d? | 2016-10-13 | 2016-10-14 | 73 | 1.25d |
| 75 |  | [RFS16] Cadastrar Valor de Repasse Financeiro | 1d? | 2016-10-14 | 2016-10-17 | 74 | 1.25d |
| 76 |  | [RFS17] Consultar Valor de Repasse Financeiro | 1d? | 2016-10-17 | 2016-10-18 | 75 | 1.25d |
| 77 |  | [RFS18] Alterar Valor de Repasse Financeiro | 1d? | 2016-10-17 | 2016-10-18 | 75 | 1.25d |
| 78 | 1.5.2.2 | **Teste - Selenium** | 1d? | 2016-10-18 | 2016-10-19 |  | 1.25d |
| 79 |  | Testar [RFS09] | 1d? | 2016-10-18 | 2016-10-19 | 67 | 1.25d |
| 80 |  | Testar [RFS10] | 1d? | 2016-10-18 | 2016-10-19 | 67 | 1.25d |
| 81 |  | Testar [RFS11] | 1d? | 2016-10-18 | 2016-10-19 | 67 | 1.25d |
| 82 |  | Testar [RFS12] | 1d? | 2016-10-18 | 2016-10-19 | 67 | 1.25d |
| 83 |  | Testar [RFS13] | 1d? | 2016-10-18 | 2016-10-19 | 67 | 1.25d |
| 84 |  | Testar [RFS14] | 1d? | 2016-10-18 | 2016-10-19 | 67 | 1.25d |
| 85 |  | Testar [RFS15] | 1d? | 2016-10-18 | 2016-10-19 | 67 | 1.25d |
| 86 |  | Testar [RFS16] | 1d? | 2016-10-18 | 2016-10-19 | 67 | 1.25d |
| 87 |  | Testar [RFS17] | 1d? | 2016-10-18 | 2016-10-19 | 67 | 1.25d |
| 88 |  | Testar [RFS18] | 1d? | 2016-10-18 | 2016-10-19 | 67 | 1.25d |
| 89 | 1.5.3 | **Release 03** | 9d? | 2016-10-19 | 2016-11-01 |  | 1.25d |
| 90 | 1.5.3.1 | **Implementação** | 8d? | 2016-10-19 | 2016-10-31 |  | 1.25d |
| 91 |  | [RFS19] Aprovar Projeto Candidato | 1d? | 2016-10-19 | 2016-10-20 | 78 | 1.25d |
| 92 |  | [RFS20] Consultar Projeto Aprovado | 1d? | 2016-10-20 | 2016-10-21 | 91 | 1.25d |
| 93 |  | [RFS21] Finalizar Projeto Aprovado | 1d? | 2016-10-21 | 2016-10-24 | 92 | 1.25d |
| 94 |  | [RFS22] Cadastrar Cotas de Financiamento | 1d? | 2016-10-24 | 2016-10-25 | 93 | 1.25d |
| 95 |  | [RFS23] Consultar Cotas de Financiamento | 1d? | 2016-10-25 | 2016-10-26 | 94 | 1.25d |
| 96 |  | [RFS24] Inserir Edital | 1d? | 2016-10-26 | 2016-10-27 | 95 | 1.25d |
| 97 |  | [RFS25] Consultar Edital | 1d? | 2016-10-27 | 2016-10-28 | 96 | 1.25d |
| 98 |  | [RFS26] Retificar Edital | 1d? | 2016-10-28 | 2016-10-31 | 97 | 1.25d |
| 99 | 1.5.3.2 | **Teste - Selenium** | 1d? | 2016-10-31 | 2016-11-01 |  | 1.25d |
| 100 |  | Testar [RFS19] | 1d? | 2016-10-31 | 2016-11-01 | 90 | 1.25d |
| 101 |  | Testar [RFS20] | 1d? | 2016-10-31 | 2016-11-01 | 90 | 1.25d |
| 102 |  | Testar [RFS21] | 1d? | 2016-10-31 | 2016-11-01 | 90 | 1.25d |
| 103 |  | Testar [RFS22] | 1d? | 2016-10-31 | 2016-11-01 | 90 | 1.25d |
| 104 |  | Testar [RFS23] | 1d? | 2016-10-31 | 2016-11-01 | 90 | 1.25d |
| 105 |  | Testar [RFS24] | 1d? | 2016-10-31 | 2016-11-01 | 90 | 1.25d |
| 106 |  | Testar [RFS25] | 1d? | 2016-10-31 | 2016-11-01 | 90 | 1.25d |
| 107 |  | Testar [RFS26] | 1d? | 2016-10-31 | 2016-11-01 | 90 | 1.25d |
| 108 | 1.5.4 | **Release 04** | 11d? | 2016-11-01 | 2016-11-16 |  | 1.25d |
| 109 | 1.5.4.1 | **Implementação** | 10d? | 2016-11-01 | 2016-11-15 |  | 1.25d |
| 110 |  | [RFS27] Definir Restrições para Financiamento de Projetos | 1d? | 2016-11-01 | 2016-11-02 | 99 | 1.25d |
| 111 |  | [RFS28] Financiar Projeto | 1d? | 2016-11-02 | 2016-11-03 | 110 | 1.25d |
| 112 |  | [RFS29] Consultar Financiamento | 1d? | 2016-11-03 | 2016-11-04 | 111 | 1.25d |
| 113 |  | [RFS30] Atribuir Recompensa | 1d? | 2016-11-04 | 2016-11-07 | 112 | 1.25d |
| 114 |  | [RFS31] Consultar Recompensa | 1d? | 2016-11-07 | 2016-11-08 | 113 | 1.25d |
| 115 |  | [RFS32] Alterar Recompensa | 1d? | 2016-11-08 | 2016-11-09 | 114 | 1.25d |
| 116 |  | [RFS33] Excluir Recompensa | 1d? | 2016-11-09 | 2016-11-10 | 115 | 1.25d |
| 117 |  | [RFS34] Gerar Relatório dos Projetos por Categoria | 1d? | 2016-11-10 | 2016-11-11 | 116 | 1.25d |
| 118 |  | [RFS35] Gerar Relatório de Investimentos Financeiros | 1d? | 2016-11-11 | 2016-11-14 | 117 | 1.25d |
| 119 |  | Testar [RFS27] | 1d? | 2016-11-14 | 2016-11-15 | 118 | 1.25d |
| 120 | 1.5.4.2 | **Teste - Selenium** | 1d? | 2016-11-15 | 2016-11-16 |  | 1.25d |
| 121 |  | Testar [RFS28] | 1d? | 2016-11-15 | 2016-11-16 | 109 | 1.25d |
| 122 |  | Testar [RFS29] | 1d? | 2016-11-15 | 2016-11-16 | 109 | 1.25d |
| 123 |  | Testar [RFS30] | 1d? | 2016-11-15 | 2016-11-16 | 109 | 1.25d |
| 124 |  | Testar [RFS31] | 1d? | 2016-11-15 | 2016-11-16 | 109 | 1.25d |
| 125 |  | Testar [RFS32] | 1d? | 2016-11-15 | 2016-11-16 | 109 | 1.25d |
| 126 |  | Testar [RFS33] | 1d? | 2016-11-15 | 2016-11-16 | 109 | 1.25d |
| 127 |  | Testar [RFS34] | 1d? | 2016-11-15 | 2016-11-16 | 109 | 1.25d |
| 128 |  | Testar [RFS35] | 1d? | 2016-11-15 | 2016-11-16 | 109 | 1.25d |
| 129 | 1.6 | **Implantação** | 3d? | 2016-11-16 | 2016-11-21 |  | 1.25d |
| 130 | 1.6.1 | **PIM - Plano de Implantação** | 3d? | 2016-11-16 | 2016-11-21 |  | 1.25d |
| 131 |  | Elaborar PIM | 1d? | 2016-11-16 | 2016-11-17 | 120 | 1.25d |
| 132 |  | Revisar PIM | 1d? | 2016-11-17 | 2016-11-18 | 131 | 1.25d |
| 133 |  | Aprovar PIM | 1d? | 2016-11-18 | 2016-11-21 | 132 | 1.25d |
| 134 | 1.7 | **Fechamento** | 2d? | 2016-11-16 | 2016-11-18 |  | 2.25d |
| 135 | 1.7.1 | **Monitoramento e Controle** | 1d? | 2016-11-16 | 2016-11-17 |  | 3.25d |
| 136 |  | Acompanhar Projeto | 1d? | 2016-11-16 | 2016-11-17 | 46 | 3.25d |
| 137 | 1.7.2 | **Gerência de Configuração** | 2d? | 2016-11-16 | 2016-11-18 |  | 2.25d |
| 138 |  | Elaborar Branch | 1d? | 2016-11-16 | 2016-11-17 | 46 | 2.25d |
| 139 |  | Realizar Merge da Branch para a Trunk | 1d? | 2016-11-17 | 2016-11-18 | 138 | 2.25d |
| 140 | 1.8 | **Controle de Mudanças** | 1d? | 2016-11-16 | 2016-11-17 |  | 0d |

| ID | WBS | Task | Duration | Start | Finish | Predecessors | Total float |
| --- | --- | --- | --- | --- | --- | --- | --- |
| 141 | 1.8.1 | **RSM - Registro de Solicitação de Mudanças** | 1d? | 2016-11-16 | 2016-11-17 |  | 0d |
| 142 |  | Registrar mudanças | 1d? | 2016-11-16 | 2016-11-17 | 46 |  |

## Version 2 (saved 2016-10-25, file Cronograma.mpp)

Note of the change: Cronograma_EstimativaTamanho

Last finish stays 2016-11-22.

Changed:

| ID | Task | Finish | Duration | Complete | Other |
| --- | --- | --- | --- | --- | --- |
| 1 | **CrowdFunding Project** |  |  | 45% → 38% |  |
| 2 | **Prospecção** |  | 10.88d → 10.12d |  |  |
| 3 | **PTEC** |  | 6.75d → 6.66d |  |  |
| 4 | Estudar Domínio de Aplicação |  | 0.5d → 0.2d |  |  |
| 5 | Encontrar-se com Fornecedor de Requisitos | 2016-08-30 A → 2016-08-29 A (-1d) | 1d → 0.5d |  |  |
| 6 | Redigir PTEC | 2016-09-05 A → 2016-09-01 A (-4d) | 4.12d → 2.48d |  |  |
| 7 | Revisar PTEC | 2016-09-06 A → 2016-09-05 A (-1d) | 1d → 0.12d |  |  |
| 8 | Aprovar PTEC |  | 0.12d → 0.03d |  |  |
| 9 | **EPT - Estimativa Preliminar de Tamanho** |  | 3.12d → 2.62d |  |  |
| 10 | Estimar Tamanho do Projeto | 2016-09-08 A → 2016-09-07 A (-1d) | 2.12d → 1.06d |  |  |
| 11 | Revisar Estimativa de Tamanho do Projeto |  | 1d → 0.5d |  |  |
| 12 | **CRP e ORP - Cronograma e Orçamentos Preliminar** |  | 4.12d → 3.38d |  |  |
| 13 | Elaborar Cronograma e Orçamento Preliminar | 2016-09-09 A → 2016-09-07 A (-2d) | 3.12d → 0.52d |  |  |
| 14 | Revisar Cronograma e Orçamento Preliminar |  | 1d → 0.25d |  |  |
| 16 | **Plano de Projeto** | 2016-09-08 A → 2016-09-07 A (-1d) | 2d? → 1.25d? |  |  |
| 17 | Elaborar Plano de Projeto |  | 1d? → 0.51d? |  |  |
| 18 | Revisar Plano de Projeto | 2016-09-08 A → 2016-09-07 A (-1d) | 1d? → 0.25d? |  |  |
| 19 | **EAP** |  | 2d? → 1.5d? |  |  |
| 20 | Elaborar EAP |  | 1d? → 1.12d? |  |  |
| 21 | Revisar EAP |  | 1d? → 0.5d? |  |  |
| 22 | **ETD - Estimativa de Tamanho Definitiva** |  | 2d? → 1.5d? |  |  |
| 24 | Revisar ETD |  | 1d? → 0.5d? |  |  |
| 29 | **Análise** | 2016-09-19 A → 2016-09-16 A (-3d) | 6d? → 5.25d? |  |  |
| 30 | **Documento de Requisitos** | 2016-09-15 A → 2016-09-16 A (+1d) | 4d? → 4.34d? |  |  |
| 31 | Reunir-se com cliente |  | 1d? → 0.5d? |  |  |
| 32 | Elaborar DRE |  | 1d? → 0.6d? |  |  |
| 33 | Revisar DRE |  | 1d? → 0.75d? |  |  |
| 34 | Submeter DRE para aprovação do cliente | 2016-09-15 A → 2016-09-16 A (+1d) | 1d? → 1.34d? |  |  |
| 35 | **MRB - Matriz de Rastreabilidade** | 2016-09-19 A → 2016-09-16 A (-3d) | 2d? → 1.25d? |  |  |
| 36 | Elaborar Matriz de Rastreabilidade |  | 1d? → 0.33d? |  |  |
| 37 | Revisar Matriz de Rastreabilidade | 2016-09-19 A → 2016-09-16 A (-3d) | 1d? → 0.25d? |  |  |
| 38 | **Modelagem UML** |  | 3d? → 3.04d? |  |  |
| 39 | **Diagrama de Classes** |  | 3d? → 3.04d? |  |  |
| 40 | Elaborar Diagrama de Classes |  | 1d? → 1.12d? |  |  |
| 42 | Atualizar MRB |  | 1d? → 1.04d? |  |  |
| 48 | **Implementação** |  | 8d? → 8.06d? |  |  |
| 49 | [RFS01] Adicionar Usuário |  | 1d → 1.06d |  |  |
| 50 | [RFS02] Editar Usuário |  | 1d → 1.06d |  |  |
| 51 | [RFS03] Consultar Usuário |  | 1d → 1.06d |  |  |
| 52 | [RFS04] Excluir Usuário |  | 1d → 1.06d |  |  |
| 53 | [RFS05] Cadastrar Projeto Candidato |  | 1d? → 1.06d? |  |  |
| 54 | [RFS06] Listar Projetos Candidatos |  | 1d? → 1.06d? |  |  |
| 55 | [RFS07] Alterar Projetos Candidatos |  | 1d? → 1.06d? |  |  |
| 56 | [RFS08] Remover Projetos Candidatos |  | 1d? → 1.06d? |  |  |
| 134 | **Fechamento/Monitoramento e Controle** |  |  |  | was named Fechamento |

## Version 3 (saved 2016-10-30, file Cronograma.mpp)

Note of the change: - RFS014 implementado e funcional - RFS015 implementado e funcional - RFS019 implementado e funcional - Adição do Banco de Dados

Last finish stays 2016-11-22. Complete tasks 45 → 61.

Removed: 87 Testar [RFS17]; 88 Testar [RFS18]

Changed:

| ID | Task | Start | Finish | Duration | Complete | Total float | Predecessors | Other |
| --- | --- | --- | --- | --- | --- | --- | --- | --- |
| 1 | **CrowdFunding Project** |  |  |  | 38% → 56% |  |  |  |
| 46 | **Implementação/Teste** |  | 2016-11-16 → 2016-11-14 (-2d) | 39d? → 37d? | 23% → 47% | 1.25d → 3.25d |  |  |
| 66 | **Release 02** | 2016-10-05 A | 2016-10-19 → 2016-10-18 A (-1d) | 10d? → 9d? | 0% → 100% | 1.25d → none |  |  |
| 67 | **Implementação** | 2016-10-05 A | 2016-10-18 → 2016-10-17 A (-1d) | 9d? → 8d? | 0% → 100% | 1.25d → none |  |  |
| 68 | [RFS09] Cadastrar Critério de Avaliação | 2016-10-05 A | 2016-10-06 A |  | 0% → 100% | 1.25d → none |  |  |
| 69 | [RFS10] Listar Critério de Avaliação | 2016-10-06 A | 2016-10-07 A |  | 0% → 100% | 1.25d → none |  |  |
| 70 | [RFS11] Alterar Critério de Avaliação | 2016-10-07 A | 2016-10-10 A |  | 0% → 100% | 1.25d → none |  |  |
| 71 | [RFS12] Desativar Critério de Avaliação | 2016-10-10 A | 2016-10-11 A |  | 0% → 100% | 1.25d → none |  |  |
| 72 | [RFS13] Avaliar Projeto Candidato | 2016-10-11 A | 2016-10-12 A |  | 0% → 100% | 1.25d → none |  |  |
| 73 | [RFS14] Consultar Avaliação do Projeto Candidato | 2016-10-12 A | 2016-10-13 A |  | 0% → 100% | 1.25d → none |  |  |
| 74 | [RFS15] Alterar Avaliação do Projeto Candidato | 2016-10-13 A | 2016-10-14 A |  | 0% → 100% | 1.25d → none |  |  |
| 75 | [RFS19] Aprovar Projeto Candidato | 2016-10-19 → 2016-10-14 A (-5d) | 2016-10-20 → 2016-10-17 A (-3d) |  | 0% → 100% | 1.25d → none | 76 → 74 |  |
| 76 | **Teste - Selenium** | 2016-10-18 → 2016-10-17 A (-1d) | 2016-10-19 → 2016-10-18 A (-1d) |  | 0% → 100% | 1.25d → none |  |  |
| 77 | Testar [RFS09] | 2016-10-18 → 2016-10-17 A (-1d) | 2016-10-19 → 2016-10-18 A (-1d) |  | 0% → 100% | 1.25d → none |  |  |
| 78 | Testar [RFS10] | 2016-10-18 → 2016-10-17 A (-1d) | 2016-10-19 → 2016-10-18 A (-1d) |  | 0% → 100% | 1.25d → none |  |  |
| 79 | Testar [RFS11] | 2016-10-18 → 2016-10-17 A (-1d) | 2016-10-19 → 2016-10-18 A (-1d) |  | 0% → 100% | 1.25d → none |  |  |
| 80 | Testar [RFS12] | 2016-10-18 → 2016-10-17 A (-1d) | 2016-10-19 → 2016-10-18 A (-1d) |  | 0% → 100% | 1.25d → none |  |  |
| 81 | Testar [RFS13] | 2016-10-18 → 2016-10-17 A (-1d) | 2016-10-19 → 2016-10-18 A (-1d) |  | 0% → 100% | 1.25d → none |  |  |
| 82 | Testar [RFS14] | 2016-10-18 → 2016-10-17 A (-1d) | 2016-10-19 → 2016-10-18 A (-1d) |  | 0% → 100% | 1.25d → none |  |  |
| 83 | Testar [RFS15] | 2016-10-18 → 2016-10-17 A (-1d) | 2016-10-19 → 2016-10-18 A (-1d) |  | 0% → 100% | 1.25d → none |  |  |
| 84 | Testar [RFS19] | 2016-10-18 → 2016-10-17 A (-1d) | 2016-10-19 → 2016-10-18 A (-1d) |  | 0% → 100% | 1.25d → none |  | was named Testar [RFS16] |
| 85 | **Release 03** | 2016-10-19 → 2016-10-18 (-1d) | 2016-11-01 → 2016-10-31 (-1d) |  |  | 1.25d → 0d |  |  |
| 86 | **Implementação** | 2016-10-19 → 2016-10-18 (-1d) | 2016-10-31 → 2016-10-28 (-3d) |  |  | 1.25d → 0d |  |  |
| 87 | [RFS16] Cadastrar Valor de Repasse Financeiro | 2016-10-14 → 2016-10-18 (+4d) | 2016-10-17 → 2016-10-19 (+2d) |  |  | 1.25d → none | 74 → none |  |
| 88 | [RFS17] Consultar Valor de Repasse Financeiro | 2016-10-17 → 2016-10-18 (+1d) | 2016-10-18 → 2016-10-19 (+1d) |  |  | 1.25d → none | 87 → none |  |
| 89 | [RFS18] Alterar Valor de Repasse Financeiro | 2016-10-17 → 2016-10-18 (+1d) | 2016-10-18 → 2016-10-19 (+1d) |  |  | 1.25d → 3.25d | 87 → 76 |  |
| 90 | [RFS20] Consultar Projeto Aprovado | 2016-10-20 → 2016-10-19 (-1d) | 2016-10-21 → 2016-10-20 (-1d) |  |  | 1.25d → 3.25d | 75 → 89 |  |
| 91 | [RFS21] Finalizar Projeto Aprovado | 2016-10-21 → 2016-10-20 (-1d) | 2016-10-24 → 2016-10-21 (-3d) |  |  | 1.25d → 3.25d |  |  |
| 92 | [RFS22] Cadastrar Cotas de Financiamento | 2016-10-24 → 2016-10-21 (-3d) | 2016-10-25 → 2016-10-24 (-1d) |  |  | 1.25d → 3.25d |  |  |
| 93 | [RFS23] Consultar Cotas de Financiamento | 2016-10-25 → 2016-10-24 (-1d) | 2016-10-26 → 2016-10-25 (-1d) |  |  | 1.25d → 3.25d |  |  |
| 94 | [RFS24] Inserir Edital | 2016-10-26 → 2016-10-25 (-1d) | 2016-10-27 → 2016-10-26 (-1d) |  |  | 1.25d → 3.25d |  |  |
| 95 | [RFS25] Consultar Edital | 2016-10-27 → 2016-10-26 (-1d) | 2016-10-28 → 2016-10-27 (-1d) |  |  | 1.25d → 3.25d |  |  |
| 96 | [RFS26] Retificar Edital | 2016-10-28 → 2016-10-27 (-1d) | 2016-10-31 → 2016-10-28 (-3d) |  |  | 1.25d → 3.25d |  |  |
| 97 | **Teste - Selenium** | 2016-10-31 → 2016-10-28 (-3d) | 2016-11-01 → 2016-10-31 (-1d) |  |  | 1.25d → 3.25d |  |  |
| 98 | Testar [RFS19] | 2016-10-31 → 2016-10-28 (-3d) | 2016-11-01 → 2016-10-31 (-1d) |  |  | 1.25d → 2.25d |  |  |
| 99 | Testar [RFS20] | 2016-10-31 → 2016-10-28 (-3d) | 2016-11-01 → 2016-10-31 (-1d) |  |  | 1.25d → 2.25d |  |  |
| 100 | Testar [RFS21] | 2016-10-31 → 2016-10-28 (-3d) | 2016-11-01 → 2016-10-31 (-1d) |  |  | 1.25d → 2.25d |  |  |
| 101 | Testar [RFS22] | 2016-10-31 → 2016-10-28 (-3d) | 2016-11-01 → 2016-10-31 (-1d) |  |  | 1.25d → 2.25d |  |  |
| 102 | Testar [RFS23] | 2016-10-31 → 2016-10-28 (-3d) | 2016-11-01 → 2016-10-31 (-1d) |  |  | 1.25d → 2.25d |  |  |
| 103 | Testar [RFS24] | 2016-10-31 → 2016-10-28 (-3d) | 2016-11-01 → 2016-10-31 (-1d) |  |  | 1.25d → 2.25d |  |  |
| 104 | Testar [RFS25] | 2016-10-31 → 2016-10-28 (-3d) | 2016-11-01 → 2016-10-31 (-1d) |  |  | 1.25d → 2.25d |  |  |
| 105 | Testar [RFS26] | 2016-10-31 → 2016-10-28 (-3d) | 2016-11-01 → 2016-10-31 (-1d) |  |  | 1.25d → 2.25d |  |  |
| 106 | **Release 04** | 2016-11-01 → 2016-10-31 (-1d) | 2016-11-16 → 2016-11-14 (-2d) | 11d? → 10d? |  | 1.25d → 3.25d |  |  |
| 107 | **Implementação** | 2016-11-01 → 2016-10-31 (-1d) | 2016-11-15 → 2016-11-11 (-4d) | 10d? → 9d? |  | 1.25d → 3.25d |  |  |
| 108 | [RFS27] Definir Restrições para Financiamento de Projetos | 2016-11-01 → 2016-10-31 (-1d) | 2016-11-02 → 2016-11-01 (-1d) |  |  | 1.25d → 3.25d |  |  |
| 109 | [RFS28] Financiar Projeto | 2016-11-02 → 2016-11-01 (-1d) | 2016-11-03 → 2016-11-02 (-1d) |  |  | 1.25d → 3.25d |  |  |
| 110 | [RFS29] Consultar Financiamento | 2016-11-03 → 2016-11-02 (-1d) | 2016-11-04 → 2016-11-03 (-1d) |  |  | 1.25d → 3.25d |  |  |
| 111 | [RFS30] Atribuir Recompensa | 2016-11-04 → 2016-11-03 (-1d) | 2016-11-07 → 2016-11-04 (-3d) |  |  | 1.25d → 3.25d |  |  |
| 112 | [RFS31] Consultar Recompensa | 2016-11-07 → 2016-11-04 (-3d) | 2016-11-08 → 2016-11-07 (-1d) |  |  | 1.25d → 3.25d |  |  |
| 113 | [RFS32] Alterar Recompensa | 2016-11-08 → 2016-11-07 (-1d) | 2016-11-09 → 2016-11-08 (-1d) |  |  | 1.25d → 3.25d |  |  |
| 114 | [RFS33] Excluir Recompensa | 2016-11-09 → 2016-11-08 (-1d) | 2016-11-10 → 2016-11-09 (-1d) |  |  | 1.25d → 3.25d |  |  |
| 115 | [RFS34] Gerar Relatório dos Projetos por Categoria | 2016-11-10 → 2016-11-09 (-1d) | 2016-11-11 → 2016-11-10 (-1d) |  |  | 1.25d → 3.25d |  |  |
| 116 | [RFS35] Gerar Relatório de Investimentos Financeiros | 2016-11-11 → 2016-11-10 (-1d) | 2016-11-14 → 2016-11-11 (-3d) |  |  | 1.25d → 3.25d |  |  |
| 117 | **Teste - Selenium** | 2016-11-15 → 2016-11-11 (-4d) | 2016-11-16 → 2016-11-14 (-2d) |  |  | 1.25d → 0d |  |  |
| 118 | Testar [RFS27] | 2016-11-14 → 2016-11-11 (-3d) | 2016-11-15 → 2016-11-14 (-1d) |  |  | 1.25d → none | 116 → none |  |
| 119 | Testar [RFS28] | 2016-11-15 → 2016-11-11 (-4d) | 2016-11-16 → 2016-11-14 (-2d) |  |  | 1.25d → 3.25d |  |  |
| 120 | Testar [RFS29] | 2016-11-15 → 2016-11-11 (-4d) | 2016-11-16 → 2016-11-14 (-2d) |  |  | 1.25d → 3.25d |  |  |
| 121 | Testar [RFS30] | 2016-11-15 → 2016-11-11 (-4d) | 2016-11-16 → 2016-11-14 (-2d) |  |  | 1.25d → 3.25d |  |  |
| 122 | Testar [RFS31] | 2016-11-15 → 2016-11-11 (-4d) | 2016-11-16 → 2016-11-14 (-2d) |  |  | 1.25d → 3.25d |  |  |
| 123 | Testar [RFS32] | 2016-11-15 → 2016-11-11 (-4d) | 2016-11-16 → 2016-11-14 (-2d) |  |  | 1.25d → 3.25d |  |  |
| 124 | Testar [RFS33] | 2016-11-15 → 2016-11-11 (-4d) | 2016-11-16 → 2016-11-14 (-2d) |  |  | 1.25d → 3.25d |  |  |
| 125 | Testar [RFS34] | 2016-11-15 → 2016-11-11 (-4d) | 2016-11-16 → 2016-11-14 (-2d) |  |  | 1.25d → 3.25d |  |  |
| 126 | Testar [RFS35] | 2016-11-15 → 2016-11-11 (-4d) | 2016-11-16 → 2016-11-14 (-2d) |  |  | 1.25d → 3.25d |  |  |
| 127 | **Implantação** | 2016-11-16 → 2016-11-14 (-2d) | 2016-11-21 → 2016-11-17 (-4d) |  |  | 1.25d → 3.25d |  |  |
| 128 | **PIM - Plano de Implantação** | 2016-11-16 → 2016-11-14 (-2d) | 2016-11-21 → 2016-11-17 (-4d) |  |  | 1.25d → 3.25d |  |  |
| 129 | Elaborar PIM | 2016-11-16 → 2016-11-14 (-2d) | 2016-11-17 → 2016-11-15 (-2d) |  |  | 1.25d → 3.25d |  |  |
| 130 | Revisar PIM | 2016-11-17 → 2016-11-15 (-2d) | 2016-11-18 → 2016-11-16 (-2d) |  |  | 1.25d → 3.25d |  |  |
| 131 | Aprovar PIM | 2016-11-18 → 2016-11-16 (-2d) | 2016-11-21 → 2016-11-17 (-4d) |  |  | 1.25d → 3.25d |  |  |
| 132 | **Fechamento/Monitoramento e Controle** | 2016-11-16 → 2016-11-14 (-2d) | 2016-11-18 → 2016-11-16 (-2d) |  |  | 2.25d → 4.25d |  |  |
| 133 | **Monitoramento e Controle** | 2016-11-16 → 2016-11-14 (-2d) | 2016-11-17 → 2016-11-15 (-2d) |  |  | 3.25d → 5.25d |  |  |

| ID | Task | Start | Finish | Total float |
| --- | --- | --- | --- | --- |
| 134 | Acompanhar Projeto | 2016-11-16 → 2016-11-14 (-2d) | 2016-11-17 → 2016-11-15 (-2d) | 3.25d → 5.25d |
| 135 | **Gerência de Configuração** | 2016-11-16 → 2016-11-14 (-2d) | 2016-11-18 → 2016-11-16 (-2d) | 2.25d → 4.25d |
| 136 | Elaborar Branch | 2016-11-16 → 2016-11-14 (-2d) | 2016-11-17 → 2016-11-15 (-2d) | 2.25d → 4.25d |
| 137 | Realizar Merge da Branch para a Trunk | 2016-11-17 → 2016-11-15 (-2d) | 2016-11-18 → 2016-11-16 (-2d) | 2.25d → 4.25d |

## Version 4 (saved 2016-10-31, file Cronograma.mpp)

Note of the change: Cronograma atualizado

Last finish stays 2016-11-22.

Changed:

| ID | Task | Finish | Duration | Complete | Other |
| --- | --- | --- | --- | --- | --- |
| 1 | **CrowdFunding Project** |  |  | 56% → 55% |  |
| 4 | Estudar Domínio de Aplicação |  | 0.2d → 0.11d |  | resources none → Pedro |
| 5 | Encontrar-se com Fornecedor de Requisitos |  |  |  | resources none → Davi [25%] |
| 6 | Redigir PTEC |  |  |  | resources none → Cristopher [30.3%] |
| 7 | Revisar PTEC |  |  |  | resources none → Pedro [25%] |
| 8 | Aprovar PTEC |  |  |  | resources none → Gerente de Projetos |
| 10 | Estimar Tamanho do Projeto |  |  |  | resources none → Vagner [5.9%] |
| 11 | Revisar Estimativa de Tamanho do Projeto |  |  |  | resources none → Vitor [12.5%] |
| 13 | Elaborar Cronograma e Orçamento Preliminar |  |  |  | resources none → Vitor [6%] |
| 14 | Revisar Cronograma e Orçamento Preliminar |  |  |  | resources none → Vagner [12.5%] |
| 17 | Elaborar Plano de Projeto |  |  |  | resources none → Davi |
| 18 | Revisar Plano de Projeto |  |  |  | resources none → Cristopher [25%] |
| 20 | Elaborar EAP |  |  |  | resources none → Pedro |
| 21 | Revisar EAP |  |  |  | resources none → Vitor [12.5%] |
| 23 | Elaborar ETD |  |  |  | resources none → Vagner [25%] |
| 24 | Revisar ETD |  |  |  | resources none → Cristopher [12.5%] |
| 26 | Aprovar Plano de Projeto |  |  |  | resources none → Gerente de Projetos [6.2%] |
| 27 | Aprovar EAP |  |  |  | resources none → Gerente de Projetos [6.2%] |
| 28 | Aprovar ETD |  |  |  | resources none → Gerente de Projetos [6.2%] |
| 31 | Reunir-se com cliente |  |  |  | resources none → Pedro [25%] |
| 32 | Elaborar DRE |  | 0.6d? → 0.15d? |  | resources none → Cristopher [312.5%]; Davi [312.5%]; Vagner [312.5%]; Vitor [312.5%]; Pedro |
| 33 | Revisar DRE | 2016-09-14 A → 2016-09-13 A (-1d) | 0.75d? → 0.56d? |  | resources none → Vagner; Vitor |
| 34 | Submeter DRE para aprovação do cliente |  |  |  | resources none → Cristopher |
| 36 | Elaborar Matriz de Rastreabilidade |  |  |  | resources none → Davi [75%] |
| 37 | Revisar Matriz de Rastreabilidade |  |  |  | resources none → Cristopher [25%] |
| 40 | Elaborar Diagrama de Classes |  |  |  | resources none → Vagner |
| 41 | Revisar Diagrama de Classes |  |  |  | resources none → Vitor [6.2%] |
| 42 | Atualizar MRB |  |  |  | resources none → Pedro |
| 44 | Elaborar MER |  |  |  | resources none → Vagner [25%] |
| 45 | Revisar MER |  |  |  | resources none → Davi [12.5%] |
| 49 | [RFS01] Adicionar Usuário |  |  |  | resources none → Davi [200%] |
| 50 | [RFS02] Editar Usuário |  |  |  | resources none → Vagner [200%] |
| 51 | [RFS03] Consultar Usuário |  |  |  | resources none → Vitor [200%] |
| 52 | [RFS04] Excluir Usuário |  |  |  | resources none → Cristopher [200%] |
| 53 | [RFS05] Cadastrar Projeto Candidato |  |  |  | resources none → Pedro [200%] |
| 54 | [RFS06] Listar Projetos Candidatos |  |  |  | resources none → Vitor [200%] |
| 55 | [RFS07] Alterar Projetos Candidatos |  |  |  | resources none → Vagner [200%] |
| 56 | [RFS08] Remover Projetos Candidatos |  |  |  | resources none → Davi [200%] |
| 58 | Testar [RFS01] |  |  |  | resources none → Cristopher [6.2%] |
| 59 | Testar [RFS02] |  |  |  | resources none → Pedro [6.2%] |
| 60 | Testar [RFS03] |  |  |  | resources none → Davi [6.2%] |
| 61 | Testar [RFS04] |  |  |  | resources none → Vagner [6.2%] |
| 62 | Testar [RFS05] |  |  |  | resources none → Pedro [6.2%] |
| 63 | Testar [RFS06] |  |  |  | resources none → Vitor [6.2%] |
| 64 | Testar [RFS07] |  |  |  | resources none → Vagner [6.2%] |
| 65 | Testar [RFS08] |  |  |  | resources none → Davi [6.2%] |
| 68 | [RFS09] Cadastrar Critério de Avaliação |  |  |  | resources none → Vagner [50%] |
| 69 | [RFS10] Listar Critério de Avaliação |  |  |  | resources none → Davi [50%] |
| 70 | [RFS11] Alterar Critério de Avaliação |  |  |  | resources none → Vitor [50%] |
| 71 | [RFS12] Desativar Critério de Avaliação |  |  |  | resources none → Cristopher [50%] |
| 72 | [RFS13] Avaliar Projeto Candidato |  |  |  | resources none → Pedro [50%] |
| 73 | [RFS14] Consultar Avaliação do Projeto Candidato |  |  |  | resources none → Davi [50%] |
| 74 | [RFS15] Alterar Avaliação do Projeto Candidato |  |  |  | resources none → Cristopher [50%] |
| 75 | [RFS19] Aprovar Projeto Candidato |  |  |  | resources none → Vitor [50%] |
| 77 | Testar [RFS09] |  |  |  | resources none → Vagner [6.2%] |
| 78 | Testar [RFS10] |  |  |  | resources none → Pedro [6.2%] |
| 79 | Testar [RFS11] |  |  |  | resources none → Vagner [6.2%] |
| 80 | Testar [RFS12] |  |  |  | resources none → Pedro [6.2%] |
| 81 | Testar [RFS13] |  |  |  | resources none → Cristopher [6.2%] |
| 82 | Testar [RFS14] |  |  |  | resources none → Vagner [6.2%] |
| 83 | Testar [RFS15] |  |  |  | resources none → Pedro [6.2%] |
| 84 | Testar [RFS19] |  |  |  | resources none → Vagner [6.2%] |

## Version 5 (saved 2016-11-06, file Cronograma.mpp)

Note of the change: Merge origin/master

Last finish stays 2016-11-22. Complete tasks 61 → 81.

Added:

| ID | Task | Duration | Start | Finish | Resources |
| --- | --- | --- | --- | --- | --- |
| 98 | Testar [RFS16] | 0.06d? | 2016-10-28 A | 2016-10-28 A | Vitor |
| 99 | Testar [RFS17] | 0.06d? | 2016-10-28 A | 2016-10-28 A | Cristopher |

Changed:

| ID | Task | Start | Finish | Duration | Complete | Total float | Other |
| --- | --- | --- | --- | --- | --- | --- | --- |
| 1 | **CrowdFunding Project** |  |  |  | 55% → 74% |  |  |
| 46 | **Implementação/Teste** |  |  |  | 47% → 73% |  |  |
| 85 | **Release 03** | 2016-10-18 A | 2016-10-31 → 2016-10-29 A (-2d) | 9d? → 8.25d? | 0% → 100% | 0d → none |  |
| 86 | **Implementação** | 2016-10-18 A | 2016-10-28 A |  | 0% → 100% | 0d → none |  |
| 87 | [RFS16] Cadastrar Valor de Repasse Financeiro | 2016-10-18 A | 2016-10-19 → 2016-10-18 A (-1d) | 1d? → 0.5d? | 0% → 100% |  | resources none → Davi |
| 88 | [RFS17] Consultar Valor de Repasse Financeiro | 2016-10-18 A | 2016-10-19 → 2016-10-18 A (-1d) | 1d? → 0.5d? | 0% → 100% |  | resources none → Cristopher |
| 89 | [RFS18] Alterar Valor de Repasse Financeiro | 2016-10-18 A | 2016-10-19 A |  | 0% → 100% | 3.25d → none | resources none → Vitor [50%] |
| 90 | [RFS20] Consultar Projeto Aprovado | 2016-10-19 A | 2016-10-20 A |  | 0% → 100% | 3.25d → none | resources none → Vagner [50%] |
| 91 | [RFS21] Finalizar Projeto Aprovado | 2016-10-20 A | 2016-10-21 A |  | 0% → 100% | 3.25d → none | resources none → Pedro [50%] |
| 92 | [RFS22] Cadastrar Cotas de Financiamento | 2016-10-21 A | 2016-10-24 A |  | 0% → 100% | 3.25d → none | resources none → Davi [50%] |
| 93 | [RFS23] Consultar Cotas de Financiamento | 2016-10-24 A | 2016-10-25 A |  | 0% → 100% | 3.25d → none | resources none → Cristopher [50%] |
| 94 | [RFS24] Inserir Edital | 2016-10-25 A | 2016-10-26 A |  | 0% → 100% | 3.25d → none | resources none → Vitor [50%] |
| 95 | [RFS25] Consultar Edital | 2016-10-26 A | 2016-10-27 A |  | 0% → 100% | 3.25d → none | resources none → Pedro [50%] |
| 96 | [RFS26] Retificar Edital | 2016-10-27 A | 2016-10-28 A |  | 0% → 100% | 3.25d → none | resources none → Davi [50%] |
| 97 | **Teste - Selenium** | 2016-10-28 A | 2016-10-31 → 2016-10-29 A (-2d) | 1d? → 0.25d? | 0% → 100% | 3.25d → none |  |
| 100 | Testar [RFS18] | 2016-10-28 A | 2016-10-31 → 2016-10-29 A (-2d) |  | 0% → 100% | 2.25d → none | was named Testar [RFS19]; resources none → Vitor [6.2%] |
| 101 | Testar [RFS20] | 2016-10-28 A | 2016-10-31 → 2016-10-29 A (-2d) |  | 0% → 100% | 2.25d → none | resources none → Vitor [6.2%] |
| 102 | Testar [RFS21] | 2016-10-28 A | 2016-10-31 → 2016-10-29 A (-2d) |  | 0% → 100% | 2.25d → none | resources none → Vagner [6.2%] |
| 103 | Testar [RFS22] | 2016-10-28 A | 2016-10-31 → 2016-10-29 A (-2d) |  | 0% → 100% | 2.25d → none | resources none → Vagner [6.2%] |
| 104 | Testar [RFS23] | 2016-10-28 A | 2016-10-31 → 2016-10-29 A (-2d) |  | 0% → 100% | 2.25d → none | resources none → Pedro [6.2%] |
| 105 | Testar [RFS24] | 2016-10-28 A | 2016-10-31 → 2016-10-29 A (-2d) |  | 0% → 100% | 2.25d → none | resources none → Pedro [6.2%] |
| 106 | Testar [RFS25] | 2016-10-28 A | 2016-10-31 → 2016-10-29 A (-2d) |  | 0% → 100% | 2.25d → none | resources none → Davi [6.2%] |
| 107 | Testar [RFS26] | 2016-10-28 A | 2016-10-31 → 2016-10-29 A (-2d) |  | 0% → 100% | 2.25d → none | resources none → Cristopher [6.2%] |
| 108 | **Release 04** |  |  | 10d? → 10.75d? |  |  |  |
| 109 | **Implementação** |  | 2016-11-11 → 2016-11-10 (-1d) |  |  | 3.25d → 4d |  |
| 110 | [RFS27] Definir Restrições para Financiamento de Projetos |  | 2016-11-01 → 2016-10-31 (-1d) |  |  | 3.25d → 4d |  |
| 111 | [RFS28] Financiar Projeto |  | 2016-11-02 → 2016-11-01 (-1d) |  |  | 3.25d → 4d |  |
| 112 | [RFS29] Consultar Financiamento |  | 2016-11-03 → 2016-11-02 (-1d) |  |  | 3.25d → 4d |  |
| 113 | [RFS30] Atribuir Recompensa |  | 2016-11-04 → 2016-11-03 (-1d) |  |  | 3.25d → 4d |  |
| 114 | [RFS31] Consultar Recompensa |  | 2016-11-07 → 2016-11-04 (-3d) |  |  | 3.25d → 4d |  |
| 115 | [RFS32] Alterar Recompensa |  | 2016-11-08 → 2016-11-07 (-1d) |  |  | 3.25d → 4d |  |
| 116 | [RFS33] Excluir Recompensa |  | 2016-11-09 → 2016-11-08 (-1d) |  |  | 3.25d → 4d |  |
| 117 | [RFS34] Gerar Relatório dos Projetos por Categoria |  | 2016-11-10 → 2016-11-09 (-1d) |  |  | 3.25d → 4d |  |
| 118 | [RFS35] Gerar Relatório de Investimentos Financeiros |  | 2016-11-11 → 2016-11-10 (-1d) |  |  | 3.25d → 4d |  |
| 119 | **Teste - Selenium** |  |  | 1d? → 1.75d? |  | 0d → 0.75d |  |
| 121 | Testar [RFS28] |  | 2016-11-14 → 2016-11-11 (-3d) |  |  | 3.25d → 4d |  |
| 122 | Testar [RFS29] |  | 2016-11-14 → 2016-11-11 (-3d) |  |  | 3.25d → 4d |  |
| 123 | Testar [RFS30] |  | 2016-11-14 → 2016-11-11 (-3d) |  |  | 3.25d → 4d |  |
| 124 | Testar [RFS31] |  | 2016-11-14 → 2016-11-11 (-3d) |  |  | 3.25d → 4d |  |
| 125 | Testar [RFS32] |  | 2016-11-14 → 2016-11-11 (-3d) |  |  | 3.25d → 4d |  |
| 126 | Testar [RFS33] |  | 2016-11-14 → 2016-11-11 (-3d) |  |  | 3.25d → 4d |  |
| 127 | Testar [RFS34] |  | 2016-11-14 → 2016-11-11 (-3d) |  |  | 3.25d → 4d |  |
| 128 | Testar [RFS35] |  | 2016-11-14 → 2016-11-11 (-3d) |  |  | 3.25d → 4d |  |

## Version 6 (saved 2016-11-21, file Cronograma.mpp)

Note of the change: Atualização do Cronograma

Last finish stays 2016-11-22. Complete tasks 81 → 100.

Removed: 110 [RFS27] Definir Restrições para Financiamento de Projetos; 115 [RFS32] Alterar Recompensa; 116 [RFS33] Excluir Recompensa; 120 Testar [RFS27]; 125 Testar [RFS32]; 126 Testar [RFS33]

Changed:

| ID | Task | Start | Finish | Duration | Complete | Total float | Predecessors | Other |
| --- | --- | --- | --- | --- | --- | --- | --- | --- |
| 1 | **CrowdFunding Project** |  |  |  | 74% → 100% |  |  |  |
| 46 | **Implementação/Teste** |  | 2016-11-14 → 2016-10-31 A (-14d) | 37d? → 26.25d? | 73% → 100% | 3.25d → none |  |  |
| 108 | **Release 04** | 2016-10-31 → 2016-10-29 A (-2d) | 2016-11-14 → 2016-10-31 A (-14d) | 10.75d? → 0d? | 0% → 100% | 3.25d → none |  |  |
| 109 | **Implementação** | 2016-10-31 → 2016-10-29 A (-2d) | 2016-11-10 → 2016-10-31 A (-10d) | 9d? → 0d? | 0% → 100% | 4d → none |  |  |
| 110 | [RFS28] Financiar Projeto | 2016-11-01 → 2016-10-29 A (-3d) | 2016-11-01 → 2016-10-29 A (-3d) |  | 0% → 100% | 4d → none | [RFS27] Definir Restrições para Financiamento de Projetos → 97 | resources none → Davi [50%] |
| 111 | [RFS29] Consultar Financiamento | 2016-11-02 → 2016-10-29 A (-4d) | 2016-11-02 → 2016-10-29 A (-4d) |  | 0% → 100% | 4d → none |  | resources none → Cristopher [50%] |
| 112 | [RFS30] Atribuir Recompensa | 2016-11-03 → 2016-10-29 A (-5d) | 2016-11-03 → 2016-10-30 A (-4d) |  | 0% → 100% | 4d → none |  | resources none → Pedro [50%] |
| 113 | [RFS31] Consultar Recompensa | 2016-11-04 → 2016-10-30 A (-5d) | 2016-11-04 → 2016-10-30 A (-5d) |  | 0% → 100% | 4d → none |  | resources none → Vagner [50%] |
| 114 | [RFS34] Gerar Relatório dos Projetos por Categoria | 2016-11-09 → 2016-10-30 A (-10d) | 2016-11-09 → 2016-10-30 A (-10d) |  | 0% → 100% | 4d → none | [RFS33] Excluir Recompensa → 113 | resources none → Vitor [50%] |
| 115 | [RFS35] Gerar Relatório de Investimentos Financeiros | 2016-11-10 → 2016-10-30 A (-11d) | 2016-11-10 → 2016-10-31 A (-10d) |  | 0% → 100% | 4d → none |  | resources none → Davi [50%] |
| 116 | **Teste - Selenium** | 2016-11-11 → 2016-10-31 A (-11d) | 2016-11-14 → 2016-10-31 A (-14d) | 1.75d? → 0d? | 0% → 100% | 0.75d → none |  |  |
| 117 | Testar [RFS28] | 2016-11-11 → 2016-10-31 A (-11d) | 2016-11-11 → 2016-10-31 A (-11d) | 1d? → 0.06d | 0% → 100% | 4d → none | 109 → none | resources none → Vitor |
| 118 | Testar [RFS29] | 2016-11-11 → 2016-10-31 A (-11d) | 2016-11-11 → 2016-10-31 A (-11d) |  | 0% → 100% | 4d → none |  | resources none → Vagner [6.2%] |
| 119 | Testar [RFS30] | 2016-11-11 → 2016-10-31 A (-11d) | 2016-11-11 → 2016-10-31 A (-11d) |  | 0% → 100% | 4d → none |  | resources none → Cristopher [6.2%] |
| 120 | Testar [RFS31] | 2016-11-11 → 2016-10-31 A (-11d) | 2016-11-11 → 2016-10-31 A (-11d) |  | 0% → 100% | 4d → none |  | resources none → Pedro [6.2%] |
| 121 | Testar [RFS34] | 2016-11-11 → 2016-10-31 A (-11d) | 2016-11-11 → 2016-10-31 A (-11d) |  | 0% → 100% | 4d → none |  | resources none → Davi [6.2%] |
| 122 | Testar [RFS35] | 2016-11-11 → 2016-10-31 A (-11d) | 2016-11-11 → 2016-10-31 A (-11d) |  | 0% → 100% | 4d → none |  | resources none → Vitor [6.2%] |
| 123 | **Implantação** | 2016-11-14 → 2016-10-31 A (-14d) | 2016-11-17 → 2016-11-01 A (-16d) | 3d? → 1d? | 0% → 100% | 3.25d → none |  |  |
| 124 | **PIM - Plano de Implantação** | 2016-11-14 → 2016-10-31 A (-14d) | 2016-11-17 → 2016-11-01 A (-16d) | 3d? → 1d? | 0% → 100% | 3.25d → none |  |  |
| 125 | Elaborar PIM | 2016-11-14 → 2016-10-31 A (-14d) | 2016-11-15 → 2016-10-31 A (-15d) |  | 0% → 100% | 3.25d → none |  | resources none → Pedro [25%] |
| 126 | Revisar PIM | 2016-11-15 → 2016-10-31 A (-15d) | 2016-11-16 → 2016-11-01 A (-15d) |  | 0% → 100% | 3.25d → none |  | resources none → Vagner [12.5%] |
| 127 | Aprovar PIM | 2016-11-16 → 2016-11-01 A (-15d) | 2016-11-17 → 2016-11-01 A (-16d) |  | 0% → 100% | 3.25d → none |  | resources none → Vitor [6.2%] |
| 128 | **Fechamento/Monitoramento e Controle** | 2016-11-14 → 2016-10-31 A (-14d) | 2016-11-16 → 2016-11-01 A (-15d) | 2d? → 1d? | 0% → 100% | 4.25d → none |  |  |
| 129 | **Monitoramento e Controle** | 2016-11-14 → 2016-10-31 A (-14d) | 2016-11-15 → 2016-10-31 A (-15d) | 1d? → 0.97d? | 0% → 100% | 5.25d → none |  |  |
| 130 | Acompanhar Projeto | 2016-11-14 → 2016-10-31 A (-14d) | 2016-11-15 → 2016-10-31 A (-15d) | 1d? → 1.23d? | 0% → 100% | 5.25d → none |  | resources none → Davi |
| 131 | **Gerência de Configuração** | 2016-11-14 → 2016-10-31 A (-14d) | 2016-11-16 → 2016-11-01 A (-15d) | 2d? → 1d? | 0% → 100% | 4.25d → none |  |  |
| 132 | Elaborar Branch | 2016-11-14 → 2016-10-31 A (-14d) | 2016-11-15 → 2016-10-31 A (-15d) |  | 0% → 100% | 4.25d → none |  | resources none → Cristopher [12.5%] |
| 133 | Realizar Merge da Branch para a Trunk | 2016-11-15 → 2016-10-31 A (-15d) | 2016-11-16 → 2016-11-01 A (-15d) |  | 0% → 100% | 4.25d → none |  | resources none → Vitor [37.5%] |
| 134 | **Controle de Mudanças** | 2016-11-16 A | 2016-11-17 A | 1d? → 1d | 0% → 100% | 0d → none |  |  |
| 135 | **RSM - Registro de Solicitação de Mudanças** | 2016-11-16 A | 2016-11-17 A | 1d? → 1d | 0% → 100% | 0d → none |  |  |
| 136 | Registrar mudanças | 2016-11-16 A | 2016-11-17 A | 1d? → 1d | 0% → 100% |  |  | resources none → Pedro |
